Schedule from MS Project, 2019-01-01 to 2020-01-14, 7.5 hours a day, costs in €.
Universidad Politécnica de Valencia

## Calendars

- Estándar: Mon-Fri 09:00-13:00, 15:00-19:00; Sat-Sun off.
- Mi calendario GDP: Mon-Fri 09:00-16:30; Sat-Sun off.

## Resources

| Resource | Rate | Cost per use |
| --- | --- | --- |
| Desarrolador1 | 12 |  |
| Desarrolladores2 | 24 |  |
| Team Leader | 20 |  |
| Analistas2 | 36 |  |
| Diseñador | 18 |  |
| Arquitecto de sistemas | 22 |  |
| Licencias |  | 4000 |
| Ordenadores |  | 10000 |

## Schedule

| ID | WBS | Task | Type | Duration | Start | Finish | Predecessors | Total slack | Free slack | Calendar | Resources | Work | Cost |
| --- | --- | --- | --- | --- | --- | --- | --- | --- | --- | --- | --- | --- | --- |
| 1 | 0 | **WBS Element** |  | 270.93d | 2019-01-01 | 2020-01-14 |  | 0d |  | Mi calendario GDP |  | 3150.41h | 78,039.84 |
| 2 | 1 | **Proyecto** |  | 270.93d | 2019-01-01 | 2020-01-14 |  | 0d |  | Mi calendario GDP | Licencias; Ordenadores | 3150.41h | 78,039.84 |
| 3 | 1.1 | **Fase de Análisis 15%** |  | 52.18d | 2019-01-01 | 2019-03-14 |  | 0d |  | Mi calendario GDP |  | 525.41h | 12,887.34 |
| 4 | 1.1.1 | **Elicitación 30%** |  | 21d | 2019-01-01 | 2019-01-29 |  | 0d |  | Mi calendario GDP |  | 157.5h | 3,654 |
| 5 | 1.1.1.1 | Inputs cliente/usuarios 10% |  | 15.75h | 2019-01-01 | 2019-01-03 |  | 0d |  | Mi calendario GDP | Analistas2 | 15.75h | 567 |
| 6 | 1.1.1.2 | Observación sistema actual 20% |  | 31.5h | 2019-01-03 | 2019-01-09 | 5 | 0d |  | Mi calendario GDP | Team Leader | 31.5h | 630 |
| 7 | 1.1.1.1.3 | Resumen actas reuniones y dossier de observaciones | milestone | 0h | 2019-01-09 | 2019-01-09 | 6 | 264.63d |  | Mi calendario GDP | Team Leader |  |  |
| 8 | 1.1.1.3 | Negociación 30% |  | 47.25h | 2019-01-09 | 2019-01-17 | 6 | 0d |  | Mi calendario GDP | Team Leader | 47.25h | 945 |
| 9 | 1.1.1.1.5 | Documento de visión | milestone | 0h | 2019-01-17 | 2019-01-17 | 8 | 258.33d |  | Mi calendario GDP | Team Leader |  |  |
| 10 | 1.1.1.4 | Determinación de RF y RNF 30% |  | 47.25h | 2019-01-17 | 2019-01-25 | 8 | 0d |  | Mi calendario GDP | Team Leader | 47.25h | 945 |
| 11 | 1.1.1.1.7 | Documento de alcance | milestone | 0h | 2019-01-25 | 2019-01-25 | 10 | 252.03d |  | Mi calendario GDP | Analistas2 |  |  |
| 12 | 1.1.1.5 | Priorización de objetivos 10% |  | 15.75h | 2019-01-25 | 2019-01-29 | 10 | 0d |  | Mi calendario GDP | Analistas2 | 15.75h | 567 |
| 13 | 1.1.1.1.9 | Lista priorizada de R | milestone | 0h | 2019-01-29 | 2019-01-29 | 12 | 249.93d |  | Mi calendario GDP | Team Leader |  |  |
| 14 | 1.1.2 | **Análisis 40%** |  | 19.6d | 2019-01-30 | 2019-02-26 |  | 0d |  | Mi calendario GDP |  | 210h | 5,208 |
| 15 | 1.1.2.1 | Identificación RF y RNF 40% |  | 84h | 2019-01-30 | 2019-02-14 | 12 | 0d |  | Mi calendario GDP | Team Leader | 84h | 1,680 |
| 16 | 1.1.2.2 | Priorización RF 15% |  | 31.5h | 2019-02-14 | 2019-02-20 | 15 | 234.53d |  | Mi calendario GDP | Analistas2 | 31.5h | 1,134 |
| 17 | 1.1.2.3 | Análisis arquitectura 15% |  | 31.5h | 2019-02-08 | 2019-02-14 | 15FF | 0d |  | Mi calendario GDP | Analistas2 | 31.5h | 1,134 |
| 18 | 1.1.2.4 | Realización de diagramas 30% |  | 63h | 2019-02-14 | 2019-02-26 | 17 | 0d |  | Mi calendario GDP | Team Leader | 63h | 1,260 |
| 19 | 1.1.1.2.5 | Modelos y diagramas de análisis | milestone | 0h | 2019-02-26 | 2019-02-26 | 18 | 230.33d |  | Mi calendario GDP | Analistas2 |  |  |
| 20 | 1.1.3 | **Validación 30%** |  | 11.58d | 2019-02-26 | 2019-03-14 |  | 0d |  | Mi calendario GDP |  | 157.91h | 4,025.34 |
| 21 | 1.1.3.1 | Definición de la validación RF 30% |  | 47.45h | 2019-02-26 | 2019-03-06 | 18 | 0d |  | Mi calendario GDP | Team Leader | 47.45h | 949 |
| 22 | 1.1.3.2 | Definición de la integración 10% |  | 15.75h | 2019-03-06 | 2019-03-11 | 21 | 218.75d | 0d | Mi calendario GDP | Analistas2 | 15.75h | 567 |
| 23 | 1.1.3.3 | Definición de medidas de aseguramiento de la calidad 15% |  | 23.63h | 2019-02-26 | 2019-03-01 | 21SS | 216.18d | 0d | Mi calendario GDP | Analistas2 | 23.63h | 850.68 |
| 24 | 1.1.3.4 | Definición de la validación de la arquitectura 15% |  | 23.63h | 2019-03-11 | 2019-03-14 | 22 | 218.75d | 0d | Mi calendario GDP | Arquitecto de sistemas | 23.63h | 519.86 |
| 25 | 1.1.1.3.5 | Integración de acciones específicas sobre el desarrollo y mitigación de riesgos en el Plan de calidad | milestone | 0h | 2019-03-01 | 2019-03-01 | 23 | 227.18d |  | Mi calendario GDP | Desarrolador1 |  |  |
| 26 | 1.1.1.3.6 | Documento de validación | milestone | 0h | 2019-03-14 | 2019-03-14 | 24 | 218.75d |  | Mi calendario GDP | Analistas2 |  |  |
| 27 | 1.1.3.5 | Definición de la migración 30% |  | 47.45h | 2019-03-01 | 2019-03-12 | 23 | 216.18d | 0d | Mi calendario GDP | Desarrolladores2 | 47.45h | 1,138.8 |
| 28 | 1.1.1.3.8 | Documento de migración | milestone | 0h | 2019-03-12 | 2019-03-12 | 27 | 220.85d |  | Mi calendario GDP | Analistas2 |  |  |

| ID | WBS | Task | Type | Duration | Start | Finish | Predecessors | Total slack | Free slack | Calendar | Resources | Work | Cost |
| --- | --- | --- | --- | --- | --- | --- | --- | --- | --- | --- | --- | --- | --- |
| 29 | 1.2 | **Fase de Diseño 15%** |  | 45.5d | 2019-03-06 | 2019-05-09 |  | 0d |  | Mi calendario GDP |  | 525h | 9,870 |
| 30 | 1.2.1 | Selección de técnicas 5% |  | 26.25h | 2019-03-06 | 2019-03-12 | 21 | 0d |  | Mi calendario GDP | Diseñador | 26.25h | 472.5 |
| 31 | 1.1.2.2 | Documento de métodos/técnicas | milestone | 0h | 2019-03-12 | 2019-03-12 | 30 | 220.5d |  | Mi calendario GDP | Arquitecto de sistemas |  |  |
| 32 | 1.2.2 | Diseño de la interfaz de usuario 30% |  | 157.5h | 2019-03-12 | 2019-04-10 | 30 | 0d |  | Mi calendario GDP | Diseñador | 157.5h | 2,835 |
| 33 | 1.1.2.4 | Prototipos | milestone | 0h | 2019-04-10 | 2019-04-10 | 32 | 199.5d |  | Mi calendario GDP | Diseñador |  |  |
| 34 | 1.1.2.5 | Interfaz HTML | milestone | 0h | 2019-04-10 | 2019-04-10 | 32 | 199.5d |  | Mi calendario GDP | Diseñador |  |  |
| 35 | 1.1.2.6 | Reglas de diseño - Calidad | milestone | 0h | 2019-04-10 | 2019-04-10 | 23, 30, 32 | 199.5d |  | Mi calendario GDP | Diseñador |  |  |
| 36 | 1.2.3 | Diseño de datos 25% |  | 131.25h | 2019-04-10 | 2019-05-03 | 32 | 0d |  | Mi calendario GDP | Diseñador | 131.25h | 2,362.5 |
| 37 | 1.2.4 | Diseño de la arquitectura 20% |  | 105h | 2019-04-10 | 2019-04-30 | 32 | 38.5d | 0d | Mi calendario GDP | Arquitecto de sistemas | 105h | 2,310 |
| 38 | 1.1.2.9 | Diagramas BD | milestone | 0h | 2019-05-03 | 2019-05-03 | 36 | 182d |  | Mi calendario GDP | Arquitecto de sistemas |  |  |
| 39 | 1.1.2.10 | Diagramas de arquitectura | milestone | 0h | 2019-04-30 | 2019-04-30 | 37 | 185.5d |  | Mi calendario GDP | Arquitecto de sistemas |  |  |
| 40 | 1.2.5 | Diseño de módulos 10% |  | 52.5h | 2019-04-30 | 2019-05-09 | 37 | 38.5d | 0d | Mi calendario GDP | Desarrolladores2 | 52.5h | 1,260 |
| 41 | 1.1.2.12 | Diseño de los circuitos de prueba 10% |  | 52.5h | 2019-04-30 | 2019-05-09 | 37 | 190.1d | 0d |  | Desarrolador1 | 52.5h | 630 |
| 42 | 1.1.2.13 | Diagramas de interfaces | milestone | 0h | 2019-05-09 | 2019-05-09 | 40, 41 | 178.5d |  | Mi calendario GDP | Diseñador |  |  |
| 43 | 1.3 | **Fase de Implementación 35%** |  | 98d | 2019-05-03 | 2019-09-18 |  | 0d |  | Mi calendario GDP |  | 1225h | 24,990 |
| 44 | 1.3.1 | **Módulo 1 60%** |  | 98d | 2019-05-03 | 2019-09-18 |  | 0d |  | Mi calendario GDP |  | 735h | 14,700 |
| 45 | 1.3.1.1 | Impl. Requisitos prioridad 1 40% |  | 294h | 2019-05-03 | 2019-06-28 | 36 | 0d |  | Mi calendario GDP | Desarrolladores2 | 294h | 7,056 |
| 46 | 1.1.3.1.2 | Modelo funcional 1 | milestone | 0h | 2019-06-28 | 2019-06-28 | 45 | 142.8d |  | Mi calendario GDP | Arquitecto de sistemas |  |  |
| 47 | 1.3.1.2 | Impl. Requisitos prioridad 2 30% |  | 220.5h | 2019-06-28 | 2019-08-08 | 45 | 0d |  | Mi calendario GDP | Desarrolador1 | 220.5h | 2,646 |
| 48 | 1.1.3.1.4 | Modelo funcional 2 | milestone | 0h | 2019-08-08 | 2019-08-08 | 47 | 113.4d |  | Mi calendario GDP | Desarrolladores2 |  |  |
| 49 | 1.3.1.3 | Impl. Requisitos prioridad 3 20% |  | 147h | 2019-08-08 | 2019-09-05 | 47 | 0d |  | Mi calendario GDP | Arquitecto de sistemas | 147h | 3,234 |
| 50 | 1.1.3.1.6 | Modelo funcional 3 | milestone | 0h | 2019-09-05 | 2019-09-05 | 49 | 93.8d |  | Mi calendario GDP | Arquitecto de sistemas |  |  |
| 51 | 1.3.1.4 | Impl. Requisitos prioridad 4 10% |  | 73.5h | 2019-09-05 | 2019-09-18 | 49 | 0d |  | Mi calendario GDP | Desarrolladores2 | 73.5h | 1,764 |
| 52 | 1.1.3.1.8 | Modelo funcional 4 | milestone | 0h | 2019-09-18 | 2019-09-18 | 51 | 84d |  | Mi calendario GDP | Desarrolladores2 |  |  |

| ID | WBS | Task | Type | Duration | Start | Finish | Predecessors | Total slack | Free slack | Calendar | Resources | Work | Cost |
| --- | --- | --- | --- | --- | --- | --- | --- | --- | --- | --- | --- | --- | --- |
| 53 | 1.3.2 | **Módulo 2 40%** |  | 65.33d | 2019-05-09 | 2019-08-08 |  | 38.5d |  | Mi calendario GDP |  | 490h | 10,290 |
| 54 | 1.3.2.1 | Impl. Requisitos prioridad 1 20% |  | 98h | 2019-05-09 | 2019-05-28 | 36, 37, 40 | 38.5d | 0d | Mi calendario GDP | Desarrolador1 | 98h | 1,176 |
| 55 | 1.1.3.2.2 | Modelo funcional 1 | milestone | 0h | 2019-05-28 | 2019-05-28 | 54 | 165.43d |  | Mi calendario GDP | Arquitecto de sistemas |  |  |
| 56 | 1.3.2.2 | Impl. Requisitos prioridad 2 30% |  | 147h | 2019-05-28 | 2019-06-25 | 54 | 38.5d | 0d | Mi calendario GDP | Arquitecto de sistemas | 147h | 3,234 |
| 57 | 1.1.3.2.4 | Modelo funcional 2 | milestone | 0h | 2019-06-25 | 2019-06-25 | 56 | 145.83d |  | Mi calendario GDP | Desarrolladores2 |  |  |
| 58 | 1.3.2.3 | Impl. Requisitos prioridad 3 50% |  | 245h | 2019-06-25 | 2019-08-08 | 56 | 38.5d | 0d | Mi calendario GDP | Desarrolladores2 | 245h | 5,880 |
| 59 | 1.1.3.2.6 | Modelo funcional 3 | milestone | 0h | 2019-08-08 | 2019-08-08 | 58 | 113.17d |  | Mi calendario GDP | Desarrolador1 |  |  |
| 60 | 1.4 | **Fase de Test 20%** |  | 94.5d | 2019-08-08 | 2019-12-19 |  | 18.67d |  | Mi calendario GDP |  | 700h | 13,020 |
| 61 | 1.4.1 | Pruebas unitarias Módulo 1 40% |  | 280h | 2019-09-18 | 2019-11-11 | 51 | 0d |  | Mi calendario GDP | Desarrolador1 | 280h | 3,360 |
| 62 | 1.1.4.2 | Checklist PU M1 | milestone | 0h | 2019-11-11 | 2019-11-11 | 61 | 46.67d |  | Mi calendario GDP | Arquitecto de sistemas |  |  |
| 63 | 1.4.2 | Pruebas unitarias Módulo 2 30% |  | 210h | 2019-08-08 | 2019-09-17 | 58 | 38.5d | 0d | Mi calendario GDP | Desarrolladores2 | 210h | 5,040 |
| 64 | 1.1.4.4 | Checklist PU M2 | milestone | 0h | 2019-09-17 | 2019-09-17 | 63 | 85.17d |  | Mi calendario GDP | Arquitecto de sistemas |  |  |
| 65 | 1.4.3 | Pruebas integración SW 10% |  | 70h | 2019-11-11 | 2019-11-22 | 61, 63 | 0d |  | Mi calendario GDP | Arquitecto de sistemas | 70h | 1,540 |
| 66 | 1.1.4.6 | Checklist integración | milestone | 0h | 2019-11-22 | 2019-11-22 | 65 | 37.33d |  | Mi calendario GDP | Arquitecto de sistemas |  |  |
| 67 | 1.4.4 | Pruebas arquitectura 20% |  | 140h | 2019-11-22 | 2019-12-19 | 65 | 0d |  | Mi calendario GDP | Arquitecto de sistemas | 140h | 3,080 |
| 68 | 1.1.4.8 | Documentación pruebas arquitectura | milestone | 0h | 2019-12-19 | 2019-12-19 | 67 | 18.67d |  | Mi calendario GDP | Arquitecto de sistemas |  |  |
| 69 | 1.5 | **Fase de Implantación 5%** |  | 18.67d | 2019-12-19 | 2020-01-14 |  | 0d |  | Mi calendario GDP |  | 175h | 3,272.5 |
| 70 | 1.5.1 | Pruebas implantación 60% |  | 105h | 2019-12-19 | 2020-01-08 | 67 | 0d |  | Mi calendario GDP | Desarrolador1 | 105h | 1,260 |
| 71 | 1.1.5.2 | Documentación pruebas implantación | milestone | 0h | 2020-01-08 | 2020-01-08 | 70 | 4.67d |  | Mi calendario GDP | Desarrolladores2 |  |  |
| 72 | 1.5.2 | Migración del sistema 15% |  | 26.25h | 2020-01-08 | 2020-01-13 | 27, 70 | 0d |  | Mi calendario GDP | Arquitecto de sistemas | 26.25h | 577.5 |
| 73 | 1.1.5.4 | Dossier de migración | milestone | 0h | 2020-01-13 | 2020-01-13 | 72 | 1.17d |  | Mi calendario GDP | Arquitecto de sistemas |  |  |
| 74 | 1.5.3 | Pruebas de integridad de datos cliente 5% |  | 8.75h | 2020-01-13 | 2020-01-14 | 72 | 0d |  | Mi calendario GDP | Team Leader | 8.75h | 175 |
| 75 | 1.1.5.6 | Checklist PIDC | milestone | 0h | 2020-01-14 | 2020-01-14 | 74 | 0d |  | Mi calendario GDP | Arquitecto de sistemas |  |  |
| 76 | 1.5.4 | Formaciones 20% |  | 35h | 2019-12-23 | 2019-12-27 | 70SS+2d | 12d |  | Mi calendario GDP | Analistas2 | 35h | 1,260 |
